# Création d'entreprise

Schedule from MS Project, 2019-07-30 to 2020-01-27, status date 2019-10-05, 7 hours a day, costs in $, A marks actual dates.

## Calendars

- Standard: Mon-Fri 09:00-12:00, 14:00-18:00; Sat-Sun off.

## Resources

| Resource | Rate |
| --- | --- |
| Conseiller économique | 70 |
| Connaissances | 85 |
| Avocat | 90 |
| Organisme gouvernemental | 125 |
| Direction | 75 |
| Propriétaires | 55 |
| Comptable | 65 |
| Banquier | 65 |
| Services d'informations | 45 |

## Schedule

| ID | WBS | Task | Type | Duration | Start | Finish | Predecessors | Complete | Resources | Work | Actual work | Cost | Actual cost |
| --- | --- | --- | --- | --- | --- | --- | --- | --- | --- | --- | --- | --- | --- |
| 1 | 1 | **Phase 1 - Plan stratégique** |  | 23d | 2019-07-30 A | 2019-08-30 A |  | 100% |  | 210h | 210h | 14,630 | 14,630 |
| 2 | 1.1 | **Auto-évaluation** |  | 3d | 2019-07-30 A | 2019-08-01 A |  | 100% |  | 28h | 28h | 2,065 | 2,065 |
| 3 | 1.1.1 | Définition de la vision de l'entreprise |  | 1d | 2019-07-30 A | 2019-07-30 A |  | 100% | Direction | 7h | 7h | 525 | 525 |
| 4 | 1.1.2 | Identification des compétences, des informations et des supports disponibles |  | 1d | 2019-07-31 A | 2019-07-31 A | 3 | 100% | Conseiller économique; Direction | 14h | 14h | 1,015 | 1,015 |
| 5 | 1.1.3 | Décision de poursuite du projet |  | 1d | 2019-08-01 A | 2019-08-01 A | 4 | 100% | Direction | 7h | 7h | 525 | 525 |
| 6 | 1.2 | **Définition des opportunités** |  | 10d | 2019-08-02 A | 2019-08-15 A |  | 100% |  | 84h | 84h | 5,495 | 5,495 |
| 7 | 1.2.1 | Recherche sur le marché et la concurrence |  | 1d | 2019-08-02 A | 2019-08-02 A | 5 | 100% | Conseiller économique | 7h | 7h | 490 | 490 |
| 8 | 1.2.2 | Interview des propriétaires d'entreprises similaires |  | 5d | 2019-08-05 A | 2019-08-09 A | 7 | 100% | Propriétaires | 35h | 35h | 1,925 | 1,925 |
| 9 | 1.2.3 | Identification des ressources nécessaires |  | 2d | 2019-08-12 A | 2019-08-13 A | 8 | 100% | Conseiller économique; Connaissances | 28h | 28h | 2,170 | 2,170 |
| 10 | 1.2.4 | Identification des éléments de coût d'exploitation |  | 2d | 2019-08-14 A | 2019-08-15 A | 9 | 100% | Comptable | 14h | 14h | 910 | 910 |
| 11 | 1.3 | **Évaluation de l'approche de l'entreprise** |  | 4d | 2019-08-16 A | 2019-08-21 A |  | 100% |  | 28h | 28h | 2,100 | 2,100 |
| 12 | 1.3.1 | Définition des impératifs de la nouvelle entité |  | 1d | 2019-08-16 A | 2019-08-16 A | 10 | 100% | Direction | 7h | 7h | 525 | 525 |
| 13 | 1.3.2 | Identification des opportunités d'achat d'entreprises existantes |  | 1d | 2019-08-19 A | 2019-08-19 A | 12 | 100% | Direction | 7h | 7h | 525 | 525 |
| 14 | 1.3.3 | Recherche de possibilités de franchise |  | 1d | 2019-08-20 A | 2019-08-20 A | 13 | 100% | Direction | 7h | 7h | 525 | 525 |
| 15 | 1.3.4 | Résumé de l'approche de l'entreprise |  | 1d | 2019-08-21 A | 2019-08-21 A | 14 | 100% | Direction | 7h | 7h | 525 | 525 |
| 16 | 1.4 | **Évaluation des risques et bénéfices potentiels** |  | 7d | 2019-08-19 A | 2019-08-27 A |  | 100% |  | 70h | 70h | 4,970 | 4,970 |
| 17 | 1.4.1 | Estimation de la taille et de la stabilité du marché |  | 2d | 2019-08-19 A | 2019-08-20 A | 12 | 100% | Conseiller économique | 14h | 14h | 980 | 980 |
| 18 | 1.4.2 | Estimation de la concurrence |  | 1d | 2019-08-21 A | 2019-08-21 A | 17 | 100% | Conseiller économique | 7h | 7h | 490 | 490 |
| 19 | 1.4.3 | Estimation de la disponibilité des ressources nécessaires |  | 2d | 2019-08-22 A | 2019-08-23 A | 18 | 100% | Conseiller économique | 14h | 14h | 980 | 980 |
| 20 | 1.4.4 | Évaluation réaliste des parts de marché initiales |  | 1d | 2019-08-26 A | 2019-08-26 A | 19 | 100% | Conseiller économique | 7h | 7h | 490 | 490 |
| 21 | 1.4.5 | Détermination des impératifs financiers |  | 2d | 2019-08-22 A | 2019-08-23 A | 15 | 100% | Conseiller économique | 14h | 14h | 980 | 980 |
| 22 | 1.4.6 | Examen des aptitudes personnelles |  | 1d | 2019-08-26 A | 2019-08-26 A | 21 | 100% | Direction | 7h | 7h | 525 | 525 |
| 23 | 1.4.7 | Évaluation de la rentabilité initiale |  | 1d | 2019-08-27 A | 2019-08-27 A | 22 | 100% | Direction | 7h | 7h | 525 | 525 |
| 24 | 1.5 | Examen et modifications du plan stratégique |  | 2d | 2019-08-28 A | 2019-08-29 A | 23 | 100% |  |  |  |  |  |
| 25 | 1.6 | Confirmation de la décision de poursuite du projet | milestone | 0d | 2019-08-30 A | 2019-08-30 A | 24 | 100% |  |  |  |  |  |

| ID | WBS | Task | Type | Duration | Start | Finish | Predecessors | Complete | Remaining | Total slack | Free slack | Resources | Work | Actual work | Cost | Actual cost |
| --- | --- | --- | --- | --- | --- | --- | --- | --- | --- | --- | --- | --- | --- | --- | --- | --- |
| 26 | 2 | **Phase 2 - Définition des opportunités de l'entreprise** |  | 29d | 2019-08-30 A | 2019-10-09 |  | 93% | 2d | 1d |  |  | 182h | 182h | 13,055 | 13,055 |
| 27 | 2.1 | **Définition du marché** |  | 13d | 2019-08-30 A | 2019-09-17 A |  | 100% |  |  |  |  | 91h | 91h | 6,370 | 6,370 |
| 28 | 2.1.1 | Obtention des informations disponibles |  | 1d | 2019-08-30 A | 2019-08-30 A | 25 | 100% |  |  |  | Conseiller économique | 7h | 7h | 490 | 490 |
| 29 | 2.1.2 | Création d'un plan d'analyse du marché |  | 2d | 2019-09-02 A | 2019-09-03 A | 28 | 100% |  |  |  | Conseiller économique | 14h | 14h | 980 | 980 |
| 30 | 2.1.3 | Exécution du plan d'analyse du marché |  | 5d | 2019-09-04 A | 2019-09-10 A | 29 | 100% |  |  |  | Conseiller économique | 35h | 35h | 2,450 | 2,450 |
| 31 | 2.1.4 | Identification de la concurrence |  | 2d | 2019-09-11 A | 2019-09-12 A | 30 | 100% |  |  |  | Conseiller économique | 14h | 14h | 980 | 980 |
| 32 | 2.1.5 | Synthèse du marché |  | 2d | 2019-09-13 A | 2019-09-16 A | 31 | 100% |  |  |  | Conseiller économique | 14h | 14h | 980 | 980 |
| 33 | 2.1.6 | Identification du créneau du marché cible |  | 1d | 2019-09-17 A | 2019-09-17 A | 32 | 100% |  |  |  | Conseiller économique | 7h | 7h | 490 | 490 |
| 34 | 2.2 | **Identification des matériaux et fournitures nécessaires** |  | 7d | 2019-09-18 A | 2019-09-26 A |  | 100% |  |  |  |  | 49h | 49h | 3,675 | 3,675 |
| 35 | 2.2.1 | Sélection d'une approche d'entreprise (d'après "Évaluation de l'approche de l'entreprise" ci-dessus) |  | 2d | 2019-09-18 A | 2019-09-19 A | 28SS, 33 | 100% |  |  |  | Direction | 14h | 14h | 1,050 | 1,050 |
| 36 | 2.2.2 | Identification des ressources de personnel de direction |  | 1d | 2019-09-20 A | 2019-09-20 A | 35 | 100% |  |  |  | Direction | 7h | 7h | 525 | 525 |
| 37 | 2.2.3 | Identification des impératifs de personnel |  | 1d | 2019-09-23 A | 2019-09-23 A | 36 | 100% |  |  |  | Direction | 7h | 7h | 525 | 525 |
| 38 | 2.2.4 | Identification des matières premières nécessaires |  | 1d | 2019-09-24 A | 2019-09-24 A | 37 | 100% |  |  |  | Direction | 7h | 7h | 525 | 525 |
| 39 | 2.2.5 | Identification des commodités nécessaires |  | 1d | 2019-09-25 A | 2019-09-25 A | 38 | 100% |  |  |  | Direction | 7h | 7h | 525 | 525 |
| 40 | 2.2.6 | Résumé des coûts d'exploitation et des projections financières |  | 1d | 2019-09-26 A | 2019-09-26 A | 39 | 100% |  |  |  | Direction | 7h | 7h | 525 | 525 |
| 41 | 2.3 | **Évaluation des risques et bénéfices potentiels** |  | 6d | 2019-09-27 A | 2019-10-04 A |  | 100% |  |  |  |  | 42h | 42h | 3,010 | 3,010 |
| 42 | 2.3.1 | Estimation de la taille et de la stabilité du marché |  | 2d | 2019-09-27 A | 2019-09-30 A | 40 | 100% |  |  |  | Direction | 14h | 14h | 1,050 | 1,050 |
| 43 | 2.3.2 | Estimation de la disponibilité des ressources nécessaires |  | 2d | 2019-10-01 A | 2019-10-02 A | 42 | 100% |  |  |  | Direction | 14h | 14h | 1,050 | 1,050 |
| 44 | 2.3.3 | Prévision des bénéfices financiers |  | 2d | 2019-10-03 A | 2019-10-04 A | 43 | 100% |  |  |  | Comptable | 14h | 14h | 910 | 910 |
| 45 | 2.4 | Examen et modification des opportunités de l'entreprise |  | 3d | 2019-10-07 A | 2019-10-09 | 44 | 33% | 2d | 1d | 0d |  |  |  |  |  |
| 46 | 2.5 | Confirmation de la décision de poursuite du projet | milestone | 0d | 2019-10-09 | 2019-10-09 | 45 |  |  | 1d | 0d | Conseiller économique; Connaissances; Avocat; Comptable |  |  |  |  |
| 47 | 3 | **Phase 3 - Plan d'action** |  | 26.29d | 2019-10-08 A | 2019-11-13 |  | 19% | 21.31d | 53d |  |  | 28h |  | 1,960 |  |
| 48 | 3.1 | **Développement d'un plan d'entreprise quinquennal** |  | 26.29d | 2019-10-08 A | 2019-11-13 |  | 19% | 21.31d | 53d |  |  | 28h |  | 1,960 |  |
| 49 | 3.1.1 | Description de la vision et des opportunités |  | 5d | 2019-10-08 A | 2019-10-14 A | 46 | 100% |  |  |  |  |  |  |  |  |
| 50 | 3.1.2 | Liste des hypothèses |  | 5d | 2019-10-18 A | 2019-10-24 | 49 | 20% | 4d | 59.29d | 0d |  |  |  |  |  |
| 51 | 3.1.3 | Description du marché |  | 1d | 2019-10-25 | 2019-10-25 | 50 |  |  | 59.29d | 0d |  |  |  |  |  |
| 52 | 3.1.4 | Description de la nouvelle entreprise |  | 3d | 2019-10-28 | 2019-10-30 | 51 |  |  | 59.29d | 0d |  |  |  |  |  |
| 53 | 3.1.5 | Description des points forts, points faibles, atouts et menaces |  | 1d | 2019-10-31 | 2019-10-31 | 52 |  |  | 59.29d | 0d |  |  |  |  |  |
| 54 | 3.1.6 | Estimation du volume de vente pendant la période de démarrage |  | 2d | 2019-11-01 | 2019-11-04 | 53 |  |  | 59.29d |  |  |  |  |  |  |
| 55 | 3.1.7 | Prévision des coûts d'exploitation |  | 2d | 2019-10-10 | 2019-10-11 | 46 |  |  | 1d | 0d |  |  |  |  |  |
| 56 | 3.1.8 | Établissement d'une stratégie de prix |  | 5.14d | 2019-10-14 A | 2019-10-21 | 55 | 19% | 4.14d | 0d |  |  |  |  |  |  |
| 57 | 3.1.9 | Prévision des revenus |  | 6.14d | 2019-10-16 A | 2019-10-28 | 56 | 16% | 5.14d | 0d |  |  |  |  |  |  |
| 58 | 3.1.10 | Résumé de la déclaration de trésorerie pro-forma |  | 2d | 2019-10-28 | 2019-10-30 | 57 |  |  | 0d |  |  |  |  |  |  |
| 59 | 3.1.11 | Développement de l'analyse de rentabilité |  | 1d | 2019-10-30 | 2019-10-31 | 58 |  |  | 0d |  |  |  |  |  |  |
| 60 | 3.1.12 | Développement de la projection de la marge d'autofinancement |  | 1d | 2019-10-31 | 2019-11-01 | 59 |  |  | 0d |  |  |  |  |  |  |
| 61 | 3.1.13 | Identification des impératifs de licence et de permis |  | 1d | 2019-11-01 | 2019-11-04 | 60 |  |  | 0d |  |  |  |  |  |  |
| 62 | 3.1.14 | Développement du plan de lancement |  | 2d | 2019-11-04 | 2019-11-06 | 61 |  |  | 0d |  |  |  |  |  |  |
| 63 | 3.1.15 | Développement de la stratégie de vente et de marketing |  | 1d | 2019-11-06 | 2019-11-07 | 62 |  |  | 0d |  |  |  |  |  |  |
| 64 | 3.1.16 | Développement d'une structure de distribution |  | 1d | 2019-11-07 | 2019-11-08 | 63 |  |  | 0d |  | Conseiller économique | 7h |  | 490 |  |
| 65 | 3.1.17 | Description des risques et des opportunités |  | 2d | 2019-11-08 | 2019-11-12 | 64 |  |  | 0d |  | Conseiller économique | 14h |  | 980 |  |
| 66 | 3.1.18 | Publication du projet d'entreprise |  | 1d | 2019-11-12 | 2019-11-13 | 65 |  |  | 0d |  | Conseiller économique | 7h |  | 490 |  |
| 67 | 3.1.19 | Confirmation de la décision de poursuite du projet | milestone | 0d | 2019-11-13 | 2019-11-13 | 66 |  |  | 0d |  | Conseiller économique |  |  |  |  |

| ID | WBS | Task | Type | Duration | Start | Finish | Predecessors | Total slack | Free slack | Resources | Work | Cost |
| --- | --- | --- | --- | --- | --- | --- | --- | --- | --- | --- | --- | --- |
| 68 | 4 | **Phase 4 - Exécution du plan de lancement** |  | 53d | 2019-11-13 | 2020-01-27 |  | 0d |  |  | 644h | 49,945 |
| 69 | 4.1 | Choix de l'emplacement |  | 1d | 2019-11-13 | 2019-11-14 | 67 | 0d |  |  |  |  |
| 70 | 4.2 | **Établissement d'une structure d'entreprise** |  | 24d | 2019-11-14 | 2019-12-18 |  | 0d |  |  | 259h | 20,965 |
| 71 | 4.2.1 | **Choix d'un nom** |  | 2d | 2019-11-14 | 2019-11-18 |  | 0d |  |  | 14h | 1,260 |
| 72 | 4.2.1.1 | Identifications des conséquences |  | 1d | 2019-11-14 | 2019-11-15 | 69 | 0d |  | Avocat | 7h | 630 |
| 73 | 4.2.1.2 | Recherche des noms disponibles |  | 1d | 2019-11-15 | 2019-11-18 | 72 | 0d |  | Avocat | 7h | 630 |
| 74 | 4.2.2 | **Choix d'une banque** |  | 5d | 2019-11-18 | 2019-11-25 |  | 0d |  |  | 35h | 2,275 |
| 75 | 4.2.2.1 | Établissement des comptes |  | 4d | 2019-11-18 | 2019-11-22 | 73 | 0d |  | Banquier | 28h | 1,820 |
| 76 | 4.2.2.2 | Établissement d'une ligne de crédit |  | 1d | 2019-11-22 | 2019-11-25 | 75 | 0d |  | Banquier | 7h | 455 |
| 77 | 4.2.3 | Choix d'une représentation légale |  | 1d | 2019-11-25 | 2019-11-26 | 75SS, 76 | 0d |  | Avocat | 7h | 630 |
| 78 | 4.2.4 | Sélection de la catégorie de l'impôt de l'entreprise |  | 2d | 2019-11-26 | 2019-11-28 | 77 | 0d |  | Avocat; Comptable | 28h | 2,170 |
| 79 | 4.2.5 | Choix de la source de financement |  | 2d | 2019-11-28 | 2019-12-02 | 78 | 0d |  | Direction | 14h | 1,050 |
| 80 | 4.2.6 | Engagement du financement | milestone | 0d | 2019-12-02 | 2019-12-02 | 79 | 13d | 0d | Direction |  |  |
| 81 | 4.2.7 | **Établissement de la base de contrôle des opérations** |  | 12d | 2019-12-02 | 2019-12-18 |  | 13d |  |  | 126h | 10,990 |
| 82 | 4.2.7.1 | Choix et installation du système de comptabilité |  | 2d | 2019-12-02 | 2019-12-04 | 79, 80 | 13d | 0d | Comptable | 14h | 910 |
| 83 | 4.2.7.2 | Obtention des licences et permis nécessaires |  | 4d | 2019-12-04 | 2019-12-10 | 82 | 13d | 0d | Avocat; Organisme gouvernemental | 56h | 6,020 |
| 84 | 4.2.7.3 | Obtention des assurances nécessaires |  | 4d | 2019-12-10 | 2019-12-16 | 83 | 13d | 0d | Comptable | 28h | 1,820 |
| 85 | 4.2.7.4 | Établissement du plan de sécurité |  | 2d | 2019-12-16 | 2019-12-18 | 84 | 13d | 0d | Conseiller économique; Avocat | 28h | 2,240 |
| 86 | 4.2.8 | **Développement du programme marketing** |  | 4d | 2019-11-15 | 2019-11-21 |  | 32d |  |  | 35h | 2,590 |
| 87 | 4.2.8.1 | Établissement d'une campagne de publicité |  | 2d | 2019-11-15 | 2019-11-19 | 73SS | 32d | 0d | Conseiller économique | 14h | 980 |
| 88 | 4.2.8.2 | Développement d'un logo |  | 1d | 2019-11-19 | 2019-11-20 | 87 | 32d | 0d | Conseiller économique; Avocat | 14h | 1,120 |
| 89 | 4.2.8.3 | Commande des matériaux promotionnels |  | 1d | 2019-11-20 | 2019-11-21 | 88 | 32d | 19d | Conseiller économique | 7h | 490 |
| 90 | 4.3 | **Dotation de l'installation physique** |  | 15d | 2019-12-18 | 2020-01-08 |  | 13d |  |  | 105h | 7,980 |
| 91 | 4.3.1 | Réservation du site d'opérations |  | 5d | 2019-12-18 | 2019-12-25 | 85, 89 | 13d | 0d | Avocat | 35h | 3,150 |
| 92 | 4.3.2 | Sélection du matériel du réseau informatique |  | 1d | 2019-12-25 | 2019-12-26 | 91 | 13d | 0d | Services d'informations | 7h | 315 |
| 93 | 4.3.3 | Sélection des logiciels informatiques |  | 1d | 2019-12-26 | 2019-12-27 | 92 | 13d | 0d | Services d'informations | 7h | 315 |
| 94 | 4.3.4 | Établissement des commodités |  | 3d | 2019-12-27 | 2020-01-01 | 93 | 13d | 0d | Direction | 21h | 1,575 |
| 95 | 4.3.5 | Dotation du mobilier et de l'équipement |  | 4d | 2020-01-01 | 2020-01-07 | 94 | 13d | 0d | Direction | 28h | 2,100 |
| 96 | 4.3.6 | Emménagement |  | 1d | 2020-01-07 | 2020-01-08 | 95 | 13d |  | Direction | 7h | 525 |

| ID | WBS | Task | Type | Duration | Start | Finish | Predecessors | Total slack | Resources | Work | Cost |
| --- | --- | --- | --- | --- | --- | --- | --- | --- | --- | --- | --- |
| 97 | 4.4 | **Dotation de personnel** |  | 40d | 2019-12-02 | 2020-01-27 |  | 0d |  | 280h | 21,000 |
| 98 | 4.4.1 | Entretien et test des candidats |  | 14d | 2019-12-02 | 2019-12-20 | 79 | 0d | Direction | 98h | 7,350 |
| 99 | 4.4.2 | Embauche du personnel |  | 10d | 2019-12-20 | 2020-01-03 | 98 | 0d | Direction | 70h | 5,250 |
| 100 | 4.4.3 | Formation du personnel |  | 16d | 2020-01-03 | 2020-01-27 | 99 | 0d | Direction | 112h | 8,400 |
| 101 | 4.5 | Lancement de l'entreprise | milestone | 0d | 2020-01-27 | 2020-01-27 | 96, 100 | 0d | Direction |  |  |
